# 软件开发

Schedule from MS Project, 2019-02-11 to 2019-04-02.

## Calendars

- 标准: Mon-Fri 08:00-12:00, 13:00-17:00; Sat-Sun off.

## Resources

| Resource |
| --- |
| 管理人员 |
| 项目经理 |
| 分析人员 |
| 开发人员 |
| 测试人员 |
| 培训人员 |
| 技术联络人员 |
| 部署小组 |

## Schedule

| ID | WBS | Task | Type | Duration | Start | Finish | Predecessors | Total slack | Free slack | Constraint | Resources | Work |
| --- | --- | --- | --- | --- | --- | --- | --- | --- | --- | --- | --- | --- |
| 1 | 1 | **项目范围规划** |  | 2.38d | 2019-02-11 | 2019-02-13 |  | 13.12d |  |  |  | 19h |
| 2 | 1.1 | 确定项目范围 |  | 3h | 2019-02-11 | 2019-02-11 |  | 13.12d | 0d |  | 管理人员 | 3h |
| 3 | 1.2 | 定义预备资源 |  | 1d | 2019-02-11 | 2019-02-12 | 2 | 13.12d | 0d |  | 项目经理 | 8h |
| 4 | 1.3 | 获得核心资源 |  | 1d | 2019-02-12 | 2019-02-13 | 3 | 13.12d | 0d |  | 项目经理 | 8h |
| 5 | 1.4 | 项目范围规划完成 | milestone | 0d | 2019-02-13 | 2019-02-13 | 4 | 13.12d | 0d |  |  |  |
| 6 | 2 | **分析/软件需求** |  | 7d | 2019-02-13 | 2019-02-22 |  | 13.12d |  |  |  | 56h |
| 7 | 2.1 | 行为需求分析 |  | 2d | 2019-02-13 | 2019-02-15 | 5 | 13.12d | 0d |  | 分析人员 | 16h |
| 8 | 2.2 | 起草初步的软件规范 |  | 2d | 2019-02-15 | 2019-02-19 | 7 | 13.12d | 0d |  | 分析人员 | 16h |
| 9 | 2.3 | 制定初步预算 |  | 1d | 2019-02-19 | 2019-02-20 | 8 | 13.12d | 0d |  | 项目经理 | 8h |
| 10 | 2.4 | 根据反馈修改软件规范 |  | 1d | 2019-02-20 | 2019-02-21 | 9 | 13.12d | 0d |  | 分析人员 | 8h |
| 11 | 2.5 | 获得所需资源 |  | 1d | 2019-02-21 | 2019-02-22 | 10 | 13.12d | 0d |  | 项目经理 | 8h |
| 12 | 2.6 | 分析工作完成 | milestone | 0d | 2019-02-22 | 2019-02-22 | 11 | 13.12d | 0d |  |  |  |
| 13 | 3 | **设计** |  | 10.5d | 2019-02-22 | 2019-03-08 |  | 13.12d |  |  |  | 88h |
| 14 | 3.1 | 审阅初步的软件规范 |  | 2d | 2019-02-22 | 2019-02-26 | 12 | 13.12d | 0d |  | 分析人员 | 16h |
| 15 | 3.2 | 制定功能规范 |  | 4d | 2019-02-26 | 2019-03-04 | 14 | 13.12d | 0d |  | 分析人员 | 32h |
| 16 | 3.3 | 根据功能规范开发原型 |  | 2d | 2019-03-04 | 2019-03-06 | 15 | 13.12d | 0d |  | 分析人员 | 16h |
| 17 | 3.4 | 审阅功能规范 |  | 1d | 2019-03-06 | 2019-03-07 | 16 | 13.12d | 0d |  | 管理人员 | 8h |
| 18 | 3.5 | 根据反馈修改功能规范 |  | 1d | 2019-03-07 | 2019-03-08 | 17 | 13.12d | 0d |  | 管理人员 | 8h |
| 19 | 3.6 | 获得开展后续工作的批准 |  | 4h | 2019-03-08 | 2019-03-08 | 18 | 13.12d | 0d |  | 管理人员; 项目经理 | 8h |
| 20 | 3.7 | 设计工作完成 | milestone | 0d | 2019-03-08 | 2019-03-08 | 19 | 13.12d | 0d |  |  |  |
| 21 | 4 | **开发** |  | 13d | 2019-03-05 | 2019-03-21 |  | 8d |  |  |  | 152h |
| 22 | 4.1 | 审阅功能规范 |  | 1d | 2019-03-05 | 2019-03-05 |  | 8d | 0d | start no earlier than 2019-03-05 | 开发人员 | 8h |
| 23 | 4.2 | 确定模块化/分层设计参数 |  | 1d | 2019-03-06 | 2019-03-06 | 22 | 8d | 0d |  | 开发人员 | 8h |
| 24 | 4.3 | 分派任务给开发人员 |  | 1d | 2019-03-07 | 2019-03-07 | 23 | 8d | 0d |  | 开发人员 | 8h |
| 25 | 4.4 | 编写代码 |  | 10d | 2019-03-08 | 2019-03-21 | 24 | 8d | 0d |  | 开发人员 | 80h |
| 26 | 4.5 | 开发人员测试(初步调试) |  | 6d | 2019-03-12 | 2019-03-20 | 25FS-7.5% | 9.5d | 0d |  | 开发人员 | 48h |
| 27 | 4.6 | 开发工作完毕 | milestone | 0d | 2019-03-20 | 2019-03-20 | 26 | 9.5d |  |  |  |  |

| ID | WBS | Task | Type | Duration | Start | Finish | Predecessors | Total slack | Free slack | Constraint | Resources | Work |
| --- | --- | --- | --- | --- | --- | --- | --- | --- | --- | --- | --- | --- |
| 28 | 5 | **测试** |  | 18d | 2019-03-05 | 2019-03-28 |  | 0d |  |  |  | 176h |
| 29 | 5.1 | 根据产品规范制定单元测试计划 |  | 4d | 2019-03-05 | 2019-03-08 |  | 0d |  | start no earlier than 2019-03-05 | 测试人员 | 32h |
| 30 | 5.2 | 根据产品规范制定整体测试计划 |  | 4d | 2019-03-08 | 2019-03-14 | 20 | 13.12d |  |  | 测试人员 | 32h |
| 31 | 5.3 | **单元测试** |  | 7d | 2019-03-11 | 2019-03-19 |  | 0d |  |  |  | 56h |
| 32 | 5.3.1 | 审阅模块化代码 |  | 2d | 2019-03-11 | 2019-03-12 | 29 | 0d |  | start no earlier than 2019-03-08 | 测试人员 | 16h |
| 33 | 5.3.2 | 测试组件模块是否符合产品规范 |  | 1d | 2019-03-13 | 2019-03-13 | 32 | 0d |  |  | 测试人员 | 8h |
| 34 | 5.3.3 | 找出不符合产品规范的异常情况 |  | 1d | 2019-03-14 | 2019-03-14 | 33 | 0d |  |  | 测试人员 | 8h |
| 35 | 5.3.4 | 修改代码 |  | 2d | 2019-03-15 | 2019-03-18 | 34 | 0d |  |  | 测试人员 | 16h |
| 36 | 5.3.5 | 重新测试经过修改的代码 |  | 1d | 2019-03-19 | 2019-03-19 | 35 | 0d |  |  | 测试人员 | 8h |
| 37 | 5.3.6 | 单元测试完成 | milestone | 0d | 2019-03-19 | 2019-03-19 | 36 | 0d |  |  |  |  |
| 38 | 5.4 | **整体测试** |  | 7d | 2019-03-20 | 2019-03-28 |  | 0d |  |  |  | 56h |
| 39 | 5.4.1 | 测试模块集成情况 |  | 2d | 2019-03-20 | 2019-03-21 | 37 | 0d |  |  | 测试人员 | 16h |
| 40 | 5.4.2 | 找出不符合规范的异常情况 |  | 1d | 2019-03-22 | 2019-03-22 | 39 | 0d |  |  | 测试人员 | 8h |
| 41 | 5.4.3 | 修改代码 |  | 2d | 2019-03-25 | 2019-03-26 | 40 | 0d |  |  | 测试人员 | 16h |
| 42 | 5.4.4 | 重新测试经过修改的代码 |  | 2d | 2019-03-27 | 2019-03-28 | 41 | 0d |  |  | 测试人员 | 16h |
| 43 | 5.4.5 | 整体测试完成 | milestone | 0d | 2019-03-28 | 2019-03-28 | 42 | 0d |  |  |  |  |
| 44 | 6 | **试生产** |  | 25.62d | 2019-02-22 | 2019-03-29 |  | 0d |  |  |  | 16h |
| 45 | 6.1 | 确定测试群体 |  | 1d | 2019-02-22 | 2019-02-25 | 12 | 22.62d | 0d |  | 项目经理 | 8h |
| 46 | 6.2 | 确定软件分发机制 |  | 1d | 2019-02-25 | 2019-02-26 | 45 | 22.62d |  |  |  |  |
| 47 | 6.3 | 安装/部署软件 |  | 1d | 2019-03-29 | 2019-03-29 | 43, 46 | 0d |  |  | 部署小组 | 8h |
| 48 | 6.4 | 获得用户反馈 | milestone | 0w | 2019-03-29 | 2019-03-29 | 47 | 0d |  |  | 部署小组 |  |
| 49 | 7 | **部署** |  | 2d | 2019-04-01 | 2019-04-02 |  | 0d |  |  |  | 16h |
| 50 | 7.1 | 确定最终部署策略 |  | 1d | 2019-04-01 | 2019-04-01 | 48 | 0d |  |  | 部署小组 | 8h |
| 51 | 7.2 | 获得部署所需资源 | milestone | 0d | 2019-04-01 | 2019-04-01 | 50 | 0d |  |  | 部署小组 |  |
| 52 | 7.3 | 部署软件 |  | 1d | 2019-04-02 | 2019-04-02 | 51 | 0d |  |  | 部署小组 | 8h |
| 53 | 7.4 | 部署工作完成 | milestone | 0d | 2019-04-02 | 2019-04-02 | 52 | 0d |  |  |  |  |
